# 百味

How a schedule from MS Project changed from version to version. A marks actual dates.

## Version 1 (saved 2020-03-29)

Note of the change: Merge branch 'master' of https://github.com/maxiaoyanD/rainbowHuts

| ID | WBS | Task | Duration | Start | Finish | Predecessors | Total float | Constraint |
| --- | --- | --- | --- | --- | --- | --- | --- | --- |
| 1 | 1 | **启动** | 6d | 2020-03-16 | 2020-03-23 |  |  | as late as possible |
| 2 |  | 任命项目经理 | 1d | 2020-03-23 | 2020-03-23 |  | 5d | as late as possible |
| 3 |  | 组件核心团队 | 1d | 2020-03-12 | 2020-03-12 |  | -2d | as late as possible |
| 4 |  | 分析关系人 | 1d | 2020-03-12 | 2020-03-12 |  | -2d | as late as possible |
| 5 |  | 里程碑计划 | 1d | 2020-03-12 | 2020-03-12 |  | -2d | as late as possible |
| 6 |  | 制定项目章程 | 1d | 2020-03-13 | 2020-03-13 | 3, 4, 5 | -2d | as late as possible |
| 7 |  | 启动大会 | 1d | 2020-03-16 | 2020-03-16 | 6 | -2d | as late as possible |
| 8 | 2 | **规划** | 20d | 2020-04-03 | 2020-04-30 |  |  | as late as possible |
| 9 | 2.1 | **规划范围** | 15d | 2020-04-06 | 2020-04-24 |  |  | as late as possible |
| 10 |  | 制定需求说明书 | 10d | 2020-03-17 | 2020-03-30 | 7 | -14d | as late as possible |
| 11 |  | 界面设计 | 5d | 2020-03-31 | 2020-04-06 | 10 | -14d | as late as possible |
| 12 |  | 详细设计说明书 | 5d | 2020-03-31 | 2020-04-06 | 10 | -14d | as late as possible |
| 13 |  | 范围说明书 | 3d | 2020-04-02 | 2020-04-06 | 10 | -12d | as late as possible |
| 14 |  | 创建WBS | 2d | 2020-04-07 | 2020-04-08 | 13, 11, 12 | -14d | as late as possible |
| 15 |  | 形成范围基准 | 1d | 2020-04-09 | 2020-04-09 | 14 | -14d | as late as possible |
| 16 | 2.2 | **规划时间** | 6d | 2020-04-10 | 2020-04-17 |  | -14d | as late as possible |
| 17 |  | 排列工作包顺序 | 1d | 2020-04-10 | 2020-04-10 | 15 | -14d | as late as possible |
| 18 |  | 估算资源 | 2d | 2020-04-13 | 2020-04-14 | 17 | -14d | as late as possible |
| 19 |  | 估算持续时间 | 2d | 2020-04-15 | 2020-04-16 | 18 | -14d | as late as possible |
| 20 |  | 制定进度计划 | 1d | 2020-04-17 | 2020-04-17 | 19 | -14d | as late as possible |
| 21 | 2.3 | **规划成本** | 5d | 2020-04-20 | 2020-04-24 |  | -14d | as late as possible |
| 22 |  | 项目成本估算 | 3d | 2020-04-20 | 2020-04-22 | 20 | -14d | as late as possible |
| 23 |  | 项目预算 | 2d | 2020-04-23 | 2020-04-24 | 22 | -14d | as late as possible |
| 24 | 2.4 | **规划质量** | 4d | 2020-04-21 | 2020-04-24 |  | -7d | as late as possible |
| 25 |  | 制定测试计划 | 2d | 2020-04-21 | 2020-04-22 | 15 | -7d | as late as possible |
| 26 |  | 制定测试用例 | 2d | 2020-04-23 | 2020-04-24 | 25 | -7d | as late as possible |
| 27 | 2.5 | **规划人力资源** | 4d | 2020-04-17 | 2020-04-22 |  | -12d | as late as possible |
| 28 |  | 制定人力资源计划 | 2d | 2020-04-17 | 2020-04-20 | 18 | -12d | as late as possible |
| 29 |  | 制定人员配备管理计划 | 2d | 2020-04-21 | 2020-04-22 | 28 | -12d | as late as possible |
| 30 | 2.6 | **规划沟通** | 2d | 2020-04-23 | 2020-04-24 |  | -12d | as late as possible |
| 31 |  | 制定沟通管理计划 | 2d | 2020-04-23 | 2020-04-24 | 29 | -12d | as late as possible |
| 32 | 2.7 | **规划采购** | 7d | 2020-04-16 | 2020-04-24 |  | -13d | as late as possible |
| 33 |  | 自制外购分析 | 2d | 2020-04-16 | 2020-04-17 | 18 | -13d | as late as possible |
| 34 |  | 指定采购文件 | 5d | 2020-04-20 | 2020-04-24 | 33 | -13d | as late as possible |
| 35 | 2.8 | **规划风险** | 3d | 2020-04-27 | 2020-04-29 |  | -14d | as late as possible |
| 36 |  | 识别风险 | 1d | 2020-04-27 | 2020-04-27 | 16, 21, 24, 27, 30, 32 | -14d | as late as possible |
| 37 |  | 风险分析 | 1d | 2020-04-28 | 2020-04-28 | 36 | -14d | as late as possible |
| 38 |  | 制定风险登记册 | 1d | 2020-04-29 | 2020-04-29 | 37 | -14d | as late as possible |
| 39 |  | 规划整合 | 1d | 2020-04-30 | 2020-04-30 | 38 | -14d | as late as possible |
| 40 | 3 | **执行有监控** | 21d | 2020-05-18 | 2020-06-15 |  | -2d | as late as possible |
| 41 |  | 组件项目团队 | 3d | 2020-05-18 | 2020-05-20 | 8 | -3d | as late as possible |
| 42 | 3.2 | **项目执行** | 16d | 2020-05-21 | 2020-06-11 |  | -3d | as late as possible |
| 43 | 3.2.1 | **用户模块** | 16d | 2020-05-21 | 2020-06-11 |  | -3d | as late as possible |
| 44 |  | 注册登录 | 2d | 2020-05-21 | 2020-05-22 | 41 | -3d | as late as possible |
| 45 |  | 首页 | 3d | 2020-05-25 | 2020-05-27 | 44 | -3d | as late as possible |
| 46 |  | 发布作品 | 1d | 2020-05-28 | 2020-05-28 | 45 | -3d | as late as possible |
| 47 |  | 浏览作品 | 1d | 2020-05-29 | 2020-05-29 | 46 | -3d | as late as possible |
| 48 |  | 记录笔记 | 1d | 2020-06-01 | 2020-06-01 | 47 | -3d | as late as possible |
| 49 |  | 发布评论 | 1d | 2020-06-02 | 2020-06-02 | 48 | -3d | as late as possible |
| 50 |  | 收藏 | 2d | 2020-06-05 | 2020-06-08 | 49 | -1d | as late as possible |
| 51 |  | 个人设置 | 3d | 2020-06-09 | 2020-06-11 | 50 | -1d | as late as possible |
| 52 | 3.2.2 | **管理员模块** | 7d | 2020-06-03 | 2020-06-11 |  | -3d | as late as possible |
| 53 |  | 作品审核 | 1d | 2020-06-11 | 2020-06-11 | 46 | 6d | as late as possible |
| 54 |  | 评论审核 | 1d | 2020-06-03 | 2020-06-03 | 49 | -3d | as late as possible |
| 55 |  | 统计分析 | 2d | 2020-06-04 | 2020-06-05 | 54 | -3d | as late as possible |
| 56 |  | 广告推送 | 2d | 2020-06-08 | 2020-06-09 | 55 | -3d | as late as possible |
| 57 |  | 优秀作品推送 | 2d | 2020-06-10 | 2020-06-11 | 56 | -3d | as late as possible |
| 58 |  | 备份 | 3d | 2020-06-09 | 2020-06-11 |  | 63d | as late as possible |
| 59 | 3.3 | **项目监控** | 4d | 2020-06-10 | 2020-06-15 |  | -2d | as late as possible |
| 60 |  | 各指标监控 | 1d | 2020-06-10 | 2020-06-10 | 41 | 11d | as late as possible |
| 61 |  | 监控评审 | 1d | 2020-06-11 | 2020-06-11 | 60 | 11d | as late as possible |
| 62 |  | 变更评审 | 1d | 2020-06-12 | 2020-06-12 | 61 | 11d | as late as possible |
| 63 |  | 例会 | 1d | 2020-06-15 | 2020-06-15 | 62 | 11d | as late as possible |
| 64 | 3.3.5 | **管理干系人** | 1d | 2020-06-15 | 2020-06-15 |  | 14d | as late as possible |
| 65 |  | 发布项目信息 | 1d | 2020-06-15 | 2020-06-15 | 41 | 14d | as late as possible |
| 66 |  | 报告监控指标 | 1d | 2020-06-15 | 2020-06-15 | 41 | 14d | as late as possible |
| 67 |  | 干系人沟通 | 1d | 2020-06-15 | 2020-06-15 | 41 | 14d | as late as possible |
| 68 | 3.3.6 | **团队建设** | 1d | 2020-06-15 | 2020-06-15 |  | 14d | as late as possible |
| 69 |  | 培训 | 1d | 2020-06-15 | 2020-06-15 | 41 | 14d | as late as possible |
| 70 |  | 娱乐活动 | 1d | 2020-06-15 | 2020-06-15 | 41 | 14d | as late as possible |

| ID | WBS | Task | Duration | Start | Finish | Predecessors | Total float | Constraint |
| --- | --- | --- | --- | --- | --- | --- | --- | --- |
| 71 |  | 沟通 | 1d | 2020-06-15 | 2020-06-15 | 41 | 14d | as late as possible |
| 72 |  | 采购 | 1d | 2020-06-15 | 2020-06-15 | 41 | 14d | as late as possible |
| 73 |  | 项目验收 | 1d | 2020-06-12 | 2020-06-12 | 42 | -3d | as late as possible |
| 74 | 4 | **收尾** | 1d | 2020-06-15 | 2020-06-15 |  | -3d | as late as possible |
| 75 |  | 项目终验 | 1d | 2020-06-15 | 2020-06-15 | 73 | -3d | as late as possible |
| 76 |  | 结束采购 | 1d | 2020-06-15 | 2020-06-15 | 73 | -3d | as late as possible |
| 77 |  | 项目内部收尾 | 1d | 2020-06-15 | 2020-06-15 | 73 | -3d | as late as possible |

## Version 2 (saved 2020-03-30)

Note of the change: Merge branch 'master' of https://github.com/maxiaoyanD/rainbowHuts

Last finish stays 2020-06-15.

Added:

| ID | Task | Duration | Start | Finish | Predecessors | Constraint |
| --- | --- | --- | --- | --- | --- | --- |
| 47 | 作品分类 | 1d | 2020-05-28 | 2020-05-28 | 46 | start no later than 2020-05-28 |
| 54 | 作品分类审核 | 1d | 2020-06-04 | 2020-06-04 | 47 | start no later than 2020-06-04 |

Changed:

| ID | Task | Start | Finish | Duration | Total float | Other |
| --- | --- | --- | --- | --- | --- | --- |
| 40 | **执行有监控** | 2020-05-18 → 2020-05-15 (-3d) |  | 21d → 22d | -2d → -3d |  |
| 41 | 组件项目团队 | 2020-05-18 → 2020-05-15 (-3d) | 2020-05-20 → 2020-05-19 (-1d) |  | -3d → -4d |  |
| 42 | **项目执行** | 2020-05-21 → 2020-05-20 (-1d) |  | 16d → 17d |  |  |
| 44 | 注册登录 | 2020-05-21 → 2020-05-20 (-1d) | 2020-05-22 → 2020-05-21 (-1d) |  | -3d → -4d |  |
| 45 | 首页 | 2020-05-25 → 2020-05-22 (-3d) | 2020-05-27 → 2020-05-26 (-1d) |  | -3d → -4d |  |
| 46 | 发布作品 | 2020-05-28 → 2020-05-27 (-1d) | 2020-05-28 → 2020-05-27 (-1d) |  | -3d → -4d |  |
| 53 | **管理员模块** | 2020-06-03 → 2020-06-04 (+1d) |  | 7d → 6d | -3d → none |  |
| 55 | 作品审核 | 2020-06-11 → 2020-06-04 (-7d) | 2020-06-11 → 2020-06-04 (-7d) |  | 6d → 1d | constraint as late as possible → start no later than 2020-06-04 |
| 56 | 评论审核 |  |  |  |  | constraint as late as possible → start no later than 2020-06-05 |
